# WBS Ujian Online

Schedule from MS Project, 2019-04-01 to 2019-05-31, costs in Rp, A marks actual dates.

## Calendars

- Standard: Mon-Fri 08:00-12:00, 13:00-17:00; Sat-Sun off.

## Resources

| Resource | Rate | Cost per use |
| --- | --- | --- |
| Project Manager | 375000 |  |
| System Analyst | 125000 |  |
| System Design | 125000 |  |
| Programmer | 250000 |  |
| Quality Assurance | 187500 |  |
| Server | 1000000 |  |
| Sewa Tempat |  | 300000 |
| Konsumsi |  | 300000 |

## Schedule

| ID | WBS | Task | Type | Duration | Start | Finish | Predecessors | Complete | Remaining | Resources | Work | Actual work | Cost | Actual cost |
| --- | --- | --- | --- | --- | --- | --- | --- | --- | --- | --- | --- | --- | --- | --- |
| 1 | 1 | **Website Ujian Online** |  | 2.25mo | 2019-04-01 A | 2019-05-31 |  | 24% | 1.71mo |  | 712h | 162h | 152,100,000 | 26,600,000 |
| 2 | 1.1 | **Analisis Sistem** |  | 11d | 2019-04-01 A | 2019-04-13 |  | 94% | 0.65d |  | 136h | 128h | 22,200,000 | 18,600,000 |
| 3 | 1.1.1 | **Penggalian dan Analisa Kebutuhan** |  | 4d | 2019-04-01 A | 2019-04-04 A |  | 100% |  |  | 32h | 32h | 6,600,000 | 6,600,000 |
| 4 | 1.1.1.1 | Rapat koordinasi perencanaan pelaksanaan proyek. | manual | 1d | 2019-04-01 A | 2019-04-01 A |  | 100% |  | Project Manager; Konsumsi; Sewa Tempat | 8h | 8h | 3,600,000 | 3,600,000 |
| 5 | 1.1.1.2 | Melakukan wawancara dan rapat koordinasi kepada pihak client. | manual | 1d | 2019-04-02 A | 2019-04-02 A | 4 | 100% |  | System Analyst | 8h | 8h | 1,000,000 | 1,000,000 |
| 6 | 1.1.1.3 | Membuat statement of purpose, event list, dan context diagram. | manual | 2d | 2019-04-03 A | 2019-04-04 A | 5 | 100% |  | System Analyst | 16h | 16h | 2,000,000 | 2,000,000 |
| 7 | 1.1.2 | **Desain Sistem** |  | 6d | 2019-04-05 A | 2019-04-12 A |  | 100% |  |  | 48h | 48h | 6,000,000 | 6,000,000 |
| 8 | 1.1.2.1 | Membuat usecase diagram. | manual | 1d | 2019-04-05 A | 2019-04-05 A | 6 | 100% |  | System Design | 8h | 8h | 1,000,000 | 1,000,000 |
| 9 | 1.1.2.2 | Membuat state diagram. | manual | 1d | 2019-04-08 A | 2019-04-08 A | 8 | 100% |  | System Design | 8h | 8h | 1,000,000 | 1,000,000 |
| 10 | 1.1.2.3 | Membuat data flow diagram. | manual | 1d | 2019-04-09 A | 2019-04-09 A | 9 | 100% |  | System Design | 8h | 8h | 1,000,000 | 1,000,000 |
| 11 | 1.1.2.4 | Membuat kamus data. | manual | 1d | 2019-04-10 A | 2019-04-10 A | 10 | 100% |  | System Analyst | 8h | 8h | 1,000,000 | 1,000,000 |
| 12 | 1.1.2.5 | Membuat proses specification. | manual | 1d | 2019-04-11 A | 2019-04-11 A | 11 | 100% |  | System Analyst | 8h | 8h | 1,000,000 | 1,000,000 |
| 13 | 1.1.2.6 | Membuat desain database. | manual | 1d | 2019-04-12 A | 2019-04-12 A | 12 | 100% |  | System Design | 8h | 8h | 1,000,000 | 1,000,000 |
| 14 | 1.1.3 | **Dokumentasi SKPL** |  | 6d | 2019-04-05 A | 2019-04-12 A |  | 100% |  |  | 48h | 48h | 6,000,000 | 6,000,000 |
| 15 | 1.1.3.1 | Dokumentasi kebutuhan dan desain sistem (SKPL). | manual | 6d | 2019-04-05 A | 2019-04-12 A | 7SS | 100% |  | System Analyst | 48h | 48h | 6,000,000 | 6,000,000 |
| 16 | 1.1.4 | Rapat Evaluasi I | manual | 1d | 2019-04-13 | 2019-04-13 | 15 |  |  | Project Manager; Konsumsi; Sewa Tempat | 8h |  | 3,600,000 |  |
| 17 | 1.2 | **Desain Aplikasi** |  | 6d | 2019-04-15 A | 2019-04-22 |  | 5% | 5.73d |  | 88h | 4h | 13,600,000 | 500,000 |
| 18 | 1.2.1 | **Desain UI/UX** |  | 4d | 2019-04-15 A | 2019-04-18 |  | 13% | 3.5d |  | 32h | 4h | 4,000,000 | 500,000 |
| 19 | 1.2.1.1 | Membuat desain menu aplikasi dan form entry. | manual | 2d | 2019-04-15 A | 2019-04-16 | 15, 16 | 25% | 1.5d | System Design | 16h | 4h | 2,000,000 | 500,000 |
| 20 | 1.2.1.2 | Membuat desain report dan form report. | manual | 2d | 2019-04-17 | 2019-04-18 | 19 |  |  | System Design | 16h |  | 2,000,000 |  |
| 21 | 1.2.2 | **Dokumentasi DPPL** |  | 6d | 2019-04-15 | 2019-04-20 |  |  |  |  | 48h |  | 6,000,000 |  |
| 22 | 1.2.2.1 | Dokumentasi desain aplikasi (DPPL). | manual | 6d | 2019-04-15 | 2019-04-20 | 18SS |  |  | System Design | 48h |  | 6,000,000 |  |
| 23 | 1.2.3 | Rapat Evaluasi II | manual | 1d | 2019-04-20 | 2019-04-20 | 22 |  |  | Project Manager; Konsumsi; Sewa Tempat | 8h |  | 3,600,000 |  |
| 24 | 1.3 | **Implementasi** |  | 16d | 2019-04-22 A | 2019-05-11 |  | 12% | 14.06d |  | 248h | 30h | 63,600,000 | 7,500,000 |
| 25 | 1.3.1 | **Pemrograman** |  | 15d | 2019-04-22 A | 2019-05-10 |  | 25% | 11.25d |  | 120h | 30h | 30,000,000 | 7,500,000 |
| 26 | 1.3.1.1 | Membuat program aplikasi. | manual | 15d | 2019-04-22 A | 2019-05-10 | 15, 22 | 25% | 11.25d | Programmer | 120h | 30h | 30,000,000 | 7,500,000 |

| ID | WBS | Task | Type | Duration | Start | Finish | Predecessors | Resources | Work | Cost |
| --- | --- | --- | --- | --- | --- | --- | --- | --- | --- | --- |
| 27 | 1.3.2 | **Dokumentasi Pemrograman** |  | 15d | 2019-04-22 | 2019-05-10 |  |  | 120h | 30,000,000 |
| 28 | 1.3.2.1 | Dokumentasi program aplikasi. | manual | 15d | 2019-04-22 | 2019-05-10 | 26SS | Programmer | 120h | 30,000,000 |
| 29 | 1.3.3 | Rapat Evaluasi III | manual | 1d | 2019-05-11 | 2019-05-11 | 27 | Project Manager; Konsumsi; Sewa Tempat | 8h | 3,600,000 |
| 30 | 1.4 | **Testing** |  | 6d | 2019-05-13 | 2019-05-18 |  |  | 96h | 20,100,000 |
| 31 | 1.4.1 | **Testing Program** |  | 4d | 2019-05-13 | 2019-05-16 |  |  | 32h | 6,000,000 |
| 32 | 1.4.1.1 | Membuat list testing program. | manual | 2d | 2019-05-13 | 2019-05-14 | 26 | Quality Assurance | 16h | 3,000,000 |
| 33 | 1.4.1.2 | Melakukan testing program. | manual | 2d | 2019-05-15 | 2019-05-16 | 32 | Quality Assurance | 16h | 3,000,000 |
| 34 | 1.4.2 | **Dokumentasi Testing** |  | 5d | 2019-05-13 | 2019-05-17 |  |  | 56h | 10,500,000 |
| 35 | 1.4.2.1 | Membuat catatan perbaikan. | manual | 2d | 2019-05-15 | 2019-05-16 | 33SS | Quality Assurance | 16h | 3,000,000 |
| 36 | 1.4.2.2 | Dokumentasi testing program. | manual | 5d | 2019-05-13 | 2019-05-17 | 31SS, 35SS | Quality Assurance | 40h | 7,500,000 |
| 37 | 1.4.3 | Rapat Evaluasi IV | manual | 1d | 2019-05-18 | 2019-05-18 | 34 | Project Manager; Sewa Tempat; Konsumsi | 8h | 3,600,000 |
| 38 | 1.5 | **Instalasi** |  | 6d | 2019-05-20 | 2019-05-25 |  |  | 104h | 25,100,000 |
| 39 | 1.5.1 | **Instalasi Program** |  | 3d | 2019-05-20 | 2019-05-22 |  |  | 24h | 7,000,000 |
| 40 | 1.5.1.1 | Melakukan setting infrastruktur dan software pendukung. | manual | 2d | 2019-05-20 | 2019-05-21 | 30 | Server; Programmer | 16h | 5,000,000 |
| 41 | 1.5.1.2 | Instalasi program aplikasi. | manual | 1d | 2019-05-22 | 2019-05-22 | 40 | Programmer | 8h | 2,000,000 |
| 42 | 1.5.2 | **Dokumentasi User Guide** |  | 4d | 2019-05-20 | 2019-05-23 |  |  | 32h | 6,000,000 |
| 43 | 1.5.2.1 | Membuat dokumentasi User Guide. | manual | 4d | 2019-05-20 | 2019-05-23 | 39SS | Quality Assurance | 32h | 6,000,000 |
| 44 | 1.5.3 | **User Training** |  | 1d | 2019-05-24 | 2019-05-24 |  |  | 40h | 8,500,000 |
| 45 | 1.5.3.1 | Melakukan pelatihan untuk User. | manual | 1d | 2019-05-24 | 2019-05-24 | 43 | Programmer; Project Manager; Quality Assurance; System Analyst; System Design | 40h | 8,500,000 |
| 46 | 1.5.4 | Rapat Evaluasi V | manual | 1d | 2019-05-25 | 2019-05-25 | 44 | Project Manager; Sewa Tempat; Konsumsi | 8h | 3,600,000 |
| 47 | 1.6 | **Maintenance** |  | 5d | 2019-05-27 | 2019-05-31 |  |  | 40h | 7,500,000 |
| 48 | 1.6.1 | **Maintenance** |  | 5d | 2019-05-27 | 2019-05-31 |  |  | 40h | 7,500,000 |
| 49 | 1.6.1.1 | Pemeliharaan aplikasi. | manual | 5d | 2019-05-27 | 2019-05-31 | 38 | Quality Assurance | 40h | 7,500,000 |
